# template_lpi

Schedule from MS Project, 2026-05-11 to 2026-05-27, A marks actual dates.

## Calendars

- Standard: Mon-Fri 09:00-13:00, 14:00-18:00; Sat-Sun off.
- Orario LPI: Mon-Fri 08:00-12:00, 13:00-17:00; Sat-Sun off. Exceptions (off unless hours are given): 2026-05-14 to 2026-05-15 (festivo 1), 2026-05-25 (festivo 2).

## Schedule

| ID | WBS | Task | Type | Duration | Start | Finish | Complete | Remaining | Actual finish | Baseline start | Baseline finish | Baseline duration | Calendar | Work | Actual work |
| --- | --- | --- | --- | --- | --- | --- | --- | --- | --- | --- | --- | --- | --- | --- | --- |
| 1 | 1 | **Progetto** |  | 80h | 2026-05-11 09:00 A | 2026-05-27 18:00 | 39% | 48.63h |  | 2026-05-11 09:00 | 2026-05-27 18:00 | 80h | Orario LPI | 204h | 80h |
| 2 | 1.1 | **Analisi e Progettazione** |  | 12h | 2026-05-11 09:00 A | 2026-05-12 14:00 | 100% |  | 2026-05-12 11:00 | 2026-05-11 09:00 | 2026-05-12 18:00 | 12h | Orario LPI | 12h | 12h |
| 3 | 1.1.1 | Raccolta e definizione requisiti | manual | 2h | 2026-05-11 09:00 A | 2026-05-11 11:00 A | 100% |  |  | 2026-05-11 09:00 | 2026-05-11 18:00 | 2h | Orario LPI | 2h | 2h |
| 4 | 1.1.2 | Use Case | manual | 3h | 2026-05-11 09:00 A | 2026-05-11 12:00 A | 100% |  |  | 2026-05-11 09:00 | 2026-05-11 18:00 | 2h | Orario LPI | 3h | 3h |
| 5 | 1.1.3 | Gantt | manual | 1h | 2026-05-11 09:00 A | 2026-05-11 10:00 A | 100% |  |  | 2026-05-11 09:00 | 2026-05-11 18:00 | 2h | Orario LPI | 1h | 1h |
| 6 | 1.1.4 | Diagramma ER | manual | 2h | 2026-05-11 09:00 A | 2026-05-11 11:00 A | 100% |  |  | 2026-05-11 09:00 | 2026-05-11 18:00 | 2h | Orario LPI | 2h | 2h |
| 7 | 1.1.5 | Schema architetturale | manual | 1h | 2026-05-12 09:00 A | 2026-05-12 10:00 A | 100% |  |  | 2026-05-12 09:00 | 2026-05-12 18:00 | 1h | Orario LPI | 1h | 1h |
| 8 | 1.1.6 | Diagramma di flusso | manual | 2h | 2026-05-12 09:00 A | 2026-05-12 11:00 A | 100% |  |  | 2026-05-12 09:00 | 2026-05-12 18:00 | 1h | Orario LPI | 2h | 2h |
| 9 | 1.1.7 | Design delle interfacce | manual | 1h | 2026-05-12 09:00 A | 2026-05-12 10:00 A | 100% |  |  | 2026-05-12 09:00 | 2026-05-12 18:00 | 2h | Orario LPI | 1h | 1h |
| 10 | 1.2 | **Implementazione** |  | 48h | 2026-05-12 09:00 A | 2026-05-22 09:00 | 48% | 24.79h |  | 2026-05-12 09:00 | 2026-05-21 18:00 | 48h | Orario LPI | 95h | 48h |
| 11 | 1.2.1 | Setup progetto e DB | manual | 16h | 2026-05-12 09:00 A | 2026-05-13 18:00 | 31% | 11h |  | 2026-05-12 09:00 | 2026-05-12 18:00 | 4h | Orario LPI | 16h | 5h |
| 12 | 1.2.2 | Autenticazione e ruoli | manual | 16h | 2026-05-13 09:00 A | 2026-05-19 09:00 | 31% | 11h |  | 2026-05-13 09:00 | 2026-05-13 18:00 | 8h | Orario LPI | 16h | 5h |
| 13 | 1.2.3 | Gestione progetti e membri | manual | 32h | 2026-05-13 09:00 A | 2026-05-20 18:00 | 25% | 24h |  | 2026-05-18 09:00 | 2026-05-18 18:00 | 6h | Orario LPI | 36h | 12h |
| 14 | 1.2.4 | Board kanban e task | manual | 14h | 2026-05-18 09:00 A | 2026-05-19 16:00 A | 100% |  |  | 2026-05-18 09:00 | 2026-05-19 18:00 | 14h | Orario LPI | 14h | 14h |
| 15 | 1.2.5 | Etichette | manual | 3h | 2026-05-20 09:00 A | 2026-05-20 12:00 | 67% | 1h |  | 2026-05-20 09:00 | 2026-05-20 18:00 | 3h | Orario LPI | 3h | 2h |
| 16 | 1.2.6 | Commenti, log e notifiche | manual | 10h | 2026-05-20 09:00 A | 2026-05-21 11:00 A | 100% |  |  | 2026-05-20 09:00 | 2026-05-21 18:00 | 10h | Orario LPI | 10h | 10h |
| 17 | 1.2.7 | Dashboard | manual | 8h | 2026-05-12 09:00 | 2026-05-13 09:00 |  |  |  | 2026-05-21 09:00 | 2026-05-21 18:00 | 2h | Orario LPI |  |  |
| 18 | 1.3 | **Test** |  | 16h | 2026-05-22 09:00 A | 2026-05-26 18:00 | 76% | 3.81h |  | 2026-05-22 09:00 | 2026-05-22 18:00 | 8h | Orario LPI | 17h | 12h |
| 19 | 1.3.1 | Definizione dei test case | manual | 8h | 2026-05-22 09:00 A | 2026-05-22 18:00 A | 100% |  |  | 2026-05-22 09:00 | 2026-05-22 18:00 | 1h | Orario LPI | 4h | 4h |
| 20 | 1.3.2 | Test unitari | manual | 8h | 2026-05-26 09:00 A | 2026-05-26 18:00 | 63% | 3h |  | 2026-05-22 09:00 | 2026-05-22 18:00 | 2h | Orario LPI | 8h | 5h |
| 21 | 1.3.3 | Test funzionali | manual | 2h | 2026-05-22 09:00 A | 2026-05-22 11:00 | 50% | 1h |  | 2026-05-22 09:00 | 2026-05-22 18:00 | 2h | Orario LPI | 2h | 1h |
| 22 | 1.3.4 | Test manuali sui flussi utente | manual | 2h | 2026-05-22 09:00 A | 2026-05-22 11:00 | 50% | 1h |  | 2026-05-22 09:00 | 2026-05-22 18:00 | 2h | Orario LPI | 2h | 1h |
| 23 | 1.3.5 | Bug fixing | manual | 1h | 2026-05-22 09:00 A | 2026-05-22 10:00 A | 100% |  |  | 2026-05-22 09:00 | 2026-05-22 18:00 | 1h | Orario LPI | 1h | 1h |
| 24 | 1.4 | Documentazione | manual | 80h | 2026-05-11 09:00 A | 2026-05-27 18:00 | 10% | 72h |  | 2026-05-11 09:00 | 2026-05-27 18:00 | 80h | Orario LPI | 80h | 8h |

Notes:
- 2: Tutte le attività svolte in questa fase comprendono nel tempo anche la documentazione degli schemi.
